# POC项目

Schedule from a web Gantt chart, 2024-09-25 to 2025-02-14.
Saturdays and Sundays are off

## Schedule

| ID | WBS | Task | Type | Duration | Start | Finish | Predecessors | Complete | inPeople | Status |
| --- | --- | --- | --- | --- | --- | --- | --- | --- | --- | --- |
| 2 | 1 | 依赖项确认 |  | 20d | 2024-09-25 | 2024-10-22 |  | 80% | 虹软 |  |
| 3 | 2 | 功能列表确认 |  | 8d | 2024-09-25 | 2024-10-04 |  | 100% | 本田 | done |
| 4 | 3 | 开发文档交付 |  | 19d | 2024-10-07 | 2024-10-31 | 3 | 30% | 虹软 |  |
| 5 | 4 | 功能列表-UE确认 | fixed end | 6d | 2024-10-07 | 2024-10-14 | 3 | 100% | 本田 | done |
| 6 | 5 | 功能列表-内部UI作成 |  | 14d | 2024-10-15 | 2024-11-01 | 5 |  | 虹软 | waiting |
| 7 | 6 | 功能列表-客户UI作成 |  | 9d | 2024-10-15 | 2024-10-25 | 5 |  | 本田 |  |
| 8 | 7 | 功能列表-测试CASE-V1 |  | 1d | 2024-10-15 | 2024-10-15 | 5 | 100% | 虹软 | done |
| 9 | 8 | 功能列表-异常诊断-V1 |  | 1d | 2024-10-15 | 2024-10-15 | 5 | 100% | 虹软 | done |
| 10 | 9 | 开发环境-开发板提供 |  | 23d | 2024-09-25 | 2024-10-25 |  | 50% | 阿尔派 |  |
| 11 | 10 | 整车环境-OMS相机采购 |  | 10d | 2024-10-14 | 2024-10-25 |  | 20% | 虹软 |  |
| 12 | 11 | 整车环境-AVM相机采购 |  | 6d | 2024-10-11 | 2024-10-18 |  | 20% | 虹软 |  |
| 13 | 12 | 8255平台移植 |  | 15d | 2024-10-28 | 2024-11-15 | 10, 12, 11 |  | Alpine&ArcSoft | waiting |
| 14 | 13 | 整车环境-AVM样品相机，取流调试 |  | 5d | 2024-10-17 | 2024-10-23 |  | 10% | 阿尔派 |  |
| 15 | 14 | 感知算法调优 |  | 20d | 2024-11-18 | 2024-12-13 | 13 |  | ArcSoft | waiting |
| 16 | 15 | 台架联合调试 |  | 20d | 2024-11-18 | 2024-12-13 | 13 |  | Alpine&ArcSoft | waiting |
| 17 | 16 | 实车联合调试 |  | 13d | 2024-12-16 | 2025-01-01 | 16 |  | Alpine&ArcSoft | waiting |
| 18 | 17 | β版本交付 |  | 12d | 2025-01-02 | 2025-01-17 | 17 |  | ArcSoft | waiting |
| 19 | 18 | 整车环境-车辆提供 |  | 38d | 2024-09-25 | 2024-11-15 |  | 50% | 虹宜 |  |
| 20 | 19 | MCU开发环境-MCU接口资料准备 |  | 10d | 2024-10-14 | 2024-10-25 |  | 50% | 阿尔派 |  |
| 21 | 20 | MCU控制协议-破解和调试 |  | 10d | 2024-11-18 | 2024-11-29 | 22, 20, 19 |  | 虹软&虹宜 | waiting |
| 22 | 21 | MCU开发环境-编译器及工具准备 |  | 10d | 2024-10-14 | 2024-10-25 |  | 30% | 虹宜 |  |
| 23 | 22 | 实车效果调优 |  | 10d | 2025-01-20 | 2025-01-31 | 18 |  | 虹软 | waiting |
| 24 | 23 | Final版本交付 |  | 5d | 2025-02-03 | 2025-02-07 | 23 |  | 虹软 | waiting |
| 25 | 24 | 版本验收 |  | 5d | 2025-02-10 | 2025-02-14 | 24 |  | 本田 | waiting |

Notes:
- 3: 项目方确认的SOR/项目计划表
- 4: 方案设计说明、API文档、项目开发计划，接口沟通
- 8: 参考i-VISTA的评测
- 9: 不允许出现没有提示的系统异常
- 10: 样件板
- 11: 走流程中
- 12: 走流程中
- 13: 示例程序、α版SDK、测试报告（α版本用于集成调试）
- 14: 内部已完成调试，需要在阿尔派的开发板中走通 / 模组+线束 1017寄出
- 15: 精度测试报告
- 16: 上车前的联调
- 17: 具备目标功能的实车
- 18: 功能说明文档、示例程序、β版SDK、测试报告
- 19: 1辆目标实车（运至杭州，需要有临牌和商业保险）
- 20: CAN信号接口、RPC调用、TASK注册相关开发资料提供
- 23: 目标功能优化的实车
- 24: 功能说明文档、示例程序、Final版SDK、测试报告
- 25: 验收报告
